# ProjectPlan-Period4

Schedule from MS Project, 2003-10-14 to 2004-06-08, costs in $, A marks actual dates.
x

## Calendars

- Standard: Mon-Fri 08:00-12:00, 13:00-17:00; Sat-Sun off.

## Resources

| Resource | Rate |
| --- | --- |
| Ka-Lung Zen | 110 |
| Fumirou Yoshi | 125 |
| George Personius | 69 |
| Angel Diaz | 150 |
| Shelly Urrutia | 143 |
| Frida Arana |  |
| John Lewellen |  |
| Margarita Fernandez |  |
| Gabriel Alonso |  |
| Tammera Micheals |  |
| Zu-Zu Kong |  |
| Ellery Frankfurter |  |

## Schedule

| ID | WBS | Task | Duration | Start | Finish | Predecessors | Complete | Baseline start | Baseline finish | Baseline duration | Total slack | Free slack | Resources | Work | Actual work | Cost | Baseline cost | Actual cost |
| --- | --- | --- | --- | --- | --- | --- | --- | --- | --- | --- | --- | --- | --- | --- | --- | --- | --- | --- |
| 1 | 1 | **Site Preparation** | 17.06d | 2003-10-14 A | 2003-11-06 A |  | 100% | 2003-10-14 | 2003-11-06 | 18d? |  |  |  | 187.84h | 187.84h | 27,878.4 | 9,680 | 27,878.4 |
| 2 | 1.1 | Surveying | 4.08d | 2003-10-14 A | 2003-10-20 A |  | 100% | 2003-10-14 | 2003-10-23 | 8d? |  |  | Frida Arana; John Lewellen | 65.28h | 65.28h | 11,904 |  | 11,904 |
| 3 | 1.2 | Grading and clearing | 2.79d | 2003-10-24 A | 2003-10-28 A | 2 | 100% | 2003-10-24 | 2003-10-30 | 5d? |  |  | Margarita Fernandez; Ka-Lung Zen | 44.64h | 44.64h | 5,055.2 | 4,400 | 5,055.2 |
| 4 | 1.3 | Roadway development | 2.23d | 2003-10-24 A | 2003-10-28 A | 2 | 100% | 2003-10-24 | 2003-10-29 | 4d? |  |  | Ka-Lung Zen; Gabriel Alonso | 35.68h | 35.68h | 3,786.4 | 3,520 | 3,786.4 |
| 5 | 1.4 | Apply first coat of asphalt | 1.58d | 2003-10-31 A | 2003-11-03 A | 3, 4 | 100% | 2003-10-31 | 2003-11-04 | 3d? |  |  | Tammera Micheals; Zu-Zu Kong | 25.28h | 25.28h | 4,488 |  | 4,488 |
| 6 | 1.5 | Apply second cost of asphalt | 1.06d | 2003-11-05 A | 2003-11-06 A | 5 | 100% | 2003-11-05 | 2003-11-06 | 2d? |  |  | Ka-Lung Zen; Zu-Zu Kong | 16.96h | 16.96h | 2,644.8 | 1,760 | 2,644.8 |
| 7 | 2 | **General Conditions** | 21.83d | 2003-10-14 A | 2003-11-12 A |  | 100% | 2003-10-14 | 2003-10-24 | 9d? |  |  |  | 114.6h | 114.6h | 24,100.42 | 9,400 | 24,100.42 |
| 8 | 2.1 | Finalize plans and develop estimates | 9.98d | 2003-10-14 A | 2003-10-27 A |  | 100% | 2003-10-14 | 2003-10-23 | 8d? |  |  | Angel Diaz [50%]; Fumirou Yoshi [40%] | 71.86h | 71.86h | 16,503.67 | 8,000 | 16,503.67 |
| 9 | 2.2 | Apply for all permits | 21.83d | 2003-10-14 A | 2003-11-12 A |  | 100% | 2003-10-14 | 2003-10-15 | 2d? |  |  | Fumirou Yoshi [10%] | 17.46h | 17.46h | 4,883 | 200 | 4,883 |
| 10 | 2.3 | Install temporary power service | 1.08d | 2003-10-16 A | 2003-10-17 A | 9 | 100% | 2003-10-16 | 2003-10-16 | 1d? |  |  | Ellery Frankfurter | 8.64h | 8.64h | 756.87 |  | 756.87 |
| 11 | 2.4 | Install underground utilities | 1.08d | 2003-10-17 A | 2003-10-20 A | 10 | 100% | 2003-10-17 | 2003-10-17 | 1d? |  |  | Ellery Frankfurter | 8.64h | 8.64h | 756.87 |  | 756.87 |
| 12 | 2.5 | Sign contract and notice to proceed | 1d | 2003-10-24 A | 2003-10-24 A | 8 | 100% | 2003-10-24 | 2003-10-24 | 1d? |  |  | Angel Diaz | 8h | 8h | 1,200 | 1,200 | 1,200 |
| 13 | 3 | **Foundation** | 33.31d | 2003-11-07 A | 2003-12-24 A |  | 100% | 2003-11-07 | 2003-12-23 | 33d? |  |  |  | 310.32h | 310.32h | 35,182.97 | 35,560 | 35,182.97 |
| 14 | 3.1 | Excavate for foundation | 3.46d | 2003-11-07 A | 2003-11-12 A | 6, 12, 11 | 100% | 2003-11-07 | 2003-11-11 | 3d? |  |  | Ka-Lung Zen | 27.68h | 27.68h | 3,654.38 | 2,640 | 3,654.38 |
| 15 | 3.2 | Form basement walls | 7.54d | 2003-11-12 A | 2003-11-21 A | 14 | 100% | 2003-11-12 | 2003-11-28 | 13d? |  |  | George Personius; Ka-Lung Zen | 120.64h | 120.64h | 10,797.28 | 18,616 | 10,797.28 |
| 16 | 3.3 | Place concrete for foundation | 13.85d | 2003-12-01 A | 2003-12-18 A | 15 | 100% | 2003-12-01 | 2003-12-16 | 12d? |  |  | Ka-Lung Zen | 110.8h | 110.8h | 14,626.32 | 10,560 | 14,626.32 |
| 17 | 3.4 | Waterproof/insulate basement walls | 2.88d | 2003-12-17 A | 2003-12-19 A | 16 | 100% | 2003-12-17 | 2003-12-18 | 2d? |  |  | George Personius | 23.04h | 23.04h | 2,325.87 | 1,104 | 2,325.87 |
| 18 | 3.5 | Perform foundation inspection | 1.21d | 2003-12-19 A | 2003-12-22 A | 17, 14 | 100% | 2003-12-19 | 2003-12-19 | 1d? |  |  | Ka-Lung Zen | 9.68h | 9.68h | 1,339.94 | 880 | 1,339.94 |
| 19 | 3.6 | Backfill foundation | 2.31d | 2003-12-22 A | 2003-12-24 A | 18 | 100% | 2003-12-22 | 2003-12-23 | 2d? |  |  | Ka-Lung Zen | 18.48h | 18.48h | 2,439.19 | 1,760 | 2,439.19 |
| 20 | 4 | **Framing** | 15d? | 2003-12-24 | 2004-01-14 |  |  | 2003-12-24 | 2004-01-13 | 15d? | 38.67d |  |  |  |  |  |  |  |
| 21 | 4.1 | Lay 1st floor decking | 2d? | 2003-12-24 | 2003-12-26 | 19 |  | 2003-12-24 | 2003-12-25 | 2d? | 38.67d | 0d |  |  |  |  |  |  |
| 22 | 4.2 | Frame 1st floor walls | 4d? | 2003-12-26 | 2004-01-01 | 21 |  | 2003-12-26 | 2003-12-31 | 4d? | 38.67d | 0d |  |  |  |  |  |  |
| 23 | 4.3 | Frame 2nd floor decking | 2d? | 2004-01-01 | 2004-01-05 | 22 |  | 2004-01-01 | 2004-01-02 | 2d? | 38.67d | 0d |  |  |  |  |  |  |
| 24 | 4.4 | Frame 2nd floor walls | 3d? | 2004-01-05 | 2004-01-08 | 23 |  | 2004-01-05 | 2004-01-07 | 3d? | 38.67d | 0d |  |  |  |  |  |  |
| 25 | 4.5 | Complete roof framing | 3d? | 2004-01-08 | 2004-01-13 | 24 |  | 2004-01-08 | 2004-01-12 | 3d? | 38.67d | 0d |  |  |  |  |  |  |
| 26 | 4.6 | Conduct framing inspection | 1d? | 2004-01-13 | 2004-01-14 | 25 |  | 2004-01-13 | 2004-01-13 | 1d? | 38.67d | 0d |  |  |  |  |  |  |

| ID | WBS | Task | Duration | Start | Finish | Predecessors | Baseline start | Baseline finish | Baseline duration | Total slack | Free slack |
| --- | --- | --- | --- | --- | --- | --- | --- | --- | --- | --- | --- |
| 27 | 5 | **Dry In** | 22d? | 2004-01-13 | 2004-02-12 |  | 2004-01-13 | 2004-02-11 | 22d? | 38.67d |  |
| 28 | 5.1 | Install 1st floor sheathing | 3d? | 2004-01-14 | 2004-01-19 | 26 | 2004-01-14 | 2004-01-16 | 3d? | 38.67d | 0d |
| 29 | 5.2 | Install 2nd floor sheathing | 3d? | 2004-01-19 | 2004-01-22 | 28 | 2004-01-19 | 2004-01-21 | 3d? | 38.67d | 0d |
| 30 | 5.3 | Install roof decking | 3d? | 2004-01-13 | 2004-01-16 | 25 | 2004-01-13 | 2004-01-15 | 3d? | 42.67d | 0d |
| 31 | 5.4 | Install felt, flashing and shingles | 3d? | 2004-01-29 | 2004-02-03 | 36 | 2004-01-29 | 2004-02-02 | 3d? | 38.67d | 0d |
| 32 | 5.5 | Hang 1st floor exterior doors | 1d? | 2004-02-03 | 2004-02-04 | 31 | 2004-02-03 | 2004-02-03 | 1d? | 38.67d | 0d |
| 33 | 5.6 | Install 1st floor windows | 3d? | 2004-02-04 | 2004-02-09 | 32 | 2004-02-04 | 2004-02-06 | 3d? | 38.67d | 0d |
| 34 | 5.7 | Install 2nd floor windows | 3d? | 2004-02-09 | 2004-02-12 | 33 | 2004-02-09 | 2004-02-11 | 3d? | 38.67d | 0d |
| 35 | 6 | **Exterior Finishes** | 38d? | 2004-01-16 | 2004-03-10 |  | 2004-01-16 | 2004-03-09 | 38d? | 42.67d |  |
| 36 | 6.1 | Rough-in plumbing | 5d? | 2004-01-22 | 2004-01-29 | 30, 29 | 2004-01-22 | 2004-01-28 | 5d? | 38.67d | 0d |
| 37 | 6.2 | Rough-in electrical | 5d? | 2004-01-22 | 2004-01-29 | 29, 30 | 2004-01-22 | 2004-01-28 | 5d? | 44.67d | 0d |
| 38 | 6.3 | Rough-in communication - phone, cable | 2d? | 2004-01-16 | 2004-01-20 | 30 | 2004-01-16 | 2004-01-19 | 2d? | 55.67d | 17d |
| 39 | 6.4 | Conduct rough-in plumbing inspection | 1d? | 2004-01-29 | 2004-01-30 | 36 | 2004-01-29 | 2004-01-29 | 1d? | 60.67d | 0d |
| 40 | 6.5 | Place concrete for basement floor | 11d? | 2004-01-30 | 2004-02-16 | 39 | 2004-01-30 | 2004-02-13 | 11d? | 73.67d | 35d |
| 41 | 6.6 | Conduct rough-in electrical inspection | 1d? | 2004-01-29 | 2004-01-30 | 37 | 2004-01-29 | 2004-01-29 | 1d? | 44.67d | 0d |
| 42 | 6.7 | Rough-in HVAC | 3d? | 2004-01-30 | 2004-02-04 | 41 | 2004-01-30 | 2004-02-03 | 3d? | 44.67d | 0d |
| 43 | 6.8 | Conduct rough-in HVAC inspection | 1d? | 2004-02-04 | 2004-02-05 | 42 | 2004-02-04 | 2004-02-04 | 1d? | 64.67d | 26d |
| 44 | 6.9 | Complete exterior brickwork | 16d? | 2004-02-12 | 2004-03-05 | 34 | 2004-02-12 | 2004-03-04 | 16d? | 64.67d | 0d |
| 45 | 6.10 | Complete exterior siding | 3d? | 2004-03-05 | 2004-03-10 | 44 | 2004-03-05 | 2004-03-09 | 3d? | 64.67d |  |
| 46 | 7 | **Insulation** | 11d? | 2004-02-12 | 2004-02-27 |  | 2004-02-12 | 2004-02-26 | 11d? | 38.67d |  |
| 47 | 7.1 | Place wall insulation - 1st floor | 1d? | 2004-02-12 | 2004-02-13 | 34, 37, 29, 42, 38, 28 | 2004-02-12 | 2004-02-12 | 1d? | 38.67d | 0d |
| 48 | 7.2 | Place wall insulation - 2nd floor | 1d? | 2004-02-13 | 2004-02-16 | 47 | 2004-02-13 | 2004-02-13 | 1d? | 41.67d | 3d |
| 49 | 7.3 | Place ceiling insulation - 2nd floor | 1d? | 2004-02-25 | 2004-02-26 | 55, 48 | 2004-02-25 | 2004-02-25 | 1d? | 64.67d | 0d |
| 50 | 7.4 | Conduct insulation inspection | 1d? | 2004-02-26 | 2004-02-27 | 49 | 2004-02-26 | 2004-02-26 | 1d? | 64.67d | 26d |

| ID | WBS | Task | Duration | Start | Finish | Predecessors | Baseline start | Baseline finish | Baseline duration | Total slack | Free slack |
| --- | --- | --- | --- | --- | --- | --- | --- | --- | --- | --- | --- |
| 51 | 8 | **Drywall and Paint** | 15d? | 2004-02-13 | 2004-03-05 |  | 2004-02-13 | 2004-03-04 | 15d? | 38.67d |  |
| 52 | 8.1 | Install drywall - 1st floor walls | 2d? | 2004-02-13 | 2004-02-17 | 47 | 2004-02-13 | 2004-02-16 | 2d? | 38.67d | 0d |
| 53 | 8.2 | Install drywall - 1st floor overhead | 2d? | 2004-02-17 | 2004-02-19 | 52 | 2004-02-17 | 2004-02-18 | 2d? | 38.67d | 0d |
| 54 | 8.3 | Install drywall - 2nd floor walls | 2d? | 2004-02-19 | 2004-02-23 | 53, 48 | 2004-02-19 | 2004-02-20 | 2d? | 38.67d | 0d |
| 55 | 8.4 | Install drywall - 2nd floor overhead | 2d? | 2004-02-23 | 2004-02-25 | 54 | 2004-02-23 | 2004-02-24 | 2d? | 38.67d | 0d |
| 56 | 8.5 | Tape and sand - 1st floor drywall | 1d? | 2004-02-19 | 2004-02-20 | 53 | 2004-02-19 | 2004-02-19 | 1d? | 41.67d | 3d |
| 57 | 8.6 | Tape and sand - 2nd floor drywall | 1d? | 2004-02-25 | 2004-02-26 | 55, 56 | 2004-02-25 | 2004-02-25 | 1d? | 38.67d | 0d |
| 58 | 8.7 | Paint all - 1st floor | 1d? | 2004-02-26 | 2004-02-27 | 57 | 2004-02-26 | 2004-02-26 | 1d? | 38.67d | 0d |
| 59 | 8.8 | Paint all - 2nd floor | 1d? | 2004-02-27 | 2004-03-01 | 58 | 2004-02-27 | 2004-02-27 | 1d? | 52.67d | 0d |
| 60 | 8.9 | Paint exterior trim and siding | 4d? | 2004-03-01 | 2004-03-05 | 59 | 2004-03-01 | 2004-03-04 | 4d? | 52.67d | 0d |
| 61 | 9 | **Cabinets** | 6d? | 2004-02-27 | 2004-03-08 |  | 2004-02-27 | 2004-03-05 | 6d? | 38.67d |  |
| 62 | 9.1 | Install 1st floor - kitchen cabinets | 2d? | 2004-02-27 | 2004-03-02 | 58 | 2004-02-27 | 2004-03-01 | 2d? | 38.67d | 0d |
| 63 | 9.2 | Install 1st floor - master bath cabinets | 1d? | 2004-03-02 | 2004-03-03 | 62 | 2004-03-02 | 2004-03-02 | 1d? | 38.67d | 0d |
| 64 | 9.3 | Install 2nd floor - hall bath cabinets | 1d? | 2004-03-03 | 2004-03-04 | 63 | 2004-03-03 | 2004-03-03 | 1d? | 39.67d | 0d |
| 65 | 9.4 | Install chair rails and crown molding | 2d? | 2004-03-04 | 2004-03-08 | 64 | 2004-03-04 | 2004-03-05 | 2d? | 58.67d | 20d |
| 66 | 10 | **Finish Plumbing** | 6d? | 2004-03-02 | 2004-03-10 |  | 2004-03-02 | 2004-03-09 | 6d? | 38.67d |  |
| 67 | 10.1 | Complete 1st floor - kitchen plumbing | 1d? | 2004-03-02 | 2004-03-03 | 62, 39 | 2004-03-02 | 2004-03-02 | 1d? | 38.67d | 0d |
| 68 | 10.2 | Complete 1st floor - master bath plumbing | 2d? | 2004-03-03 | 2004-03-05 | 63, 67 | 2004-03-03 | 2004-03-04 | 2d? | 38.67d | 0d |
| 69 | 10.3 | Complete 2nd floor - hall bath plumbing | 2d? | 2004-03-05 | 2004-03-09 | 68, 64 | 2004-03-05 | 2004-03-08 | 2d? | 38.67d | 0d |
| 70 | 10.4 | Conduct finish plumbing inspection | 1d? | 2004-03-09 | 2004-03-10 | 69 | 2004-03-09 | 2004-03-09 | 1d? | 38.67d | 0d |
| 71 | 11 | **Finish Electrical** | 3d? | 2004-03-09 | 2004-03-12 |  | 2004-03-09 | 2004-03-11 | 3d? | 39.67d |  |
| 72 | 11.1 | Complete 1st floor circuits to standard | 1d? | 2004-03-09 | 2004-03-10 | 41, 69 | 2004-03-09 | 2004-03-09 | 1d? | 41.67d | 0d |
| 73 | 11.2 | Complete 2nd floor circuits to standard | 1d? | 2004-03-10 | 2004-03-11 | 72 | 2004-03-10 | 2004-03-10 | 1d? | 41.67d | 0d |
| 74 | 11.3 | Conduct finish electrical inspection | 1d? | 2004-03-11 | 2004-03-12 | 73 | 2004-03-11 | 2004-03-11 | 1d? | 41.67d | 3d |
| 75 | 11.4 | Complete communications wiring | 2d? | 2004-03-10 | 2004-03-12 | 70 | 2004-03-10 | 2004-03-11 | 2d? | 38.67d | 0d |

| ID | WBS | Task | Duration | Start | Finish | Predecessors | Complete | Remaining | Baseline start | Baseline finish | Baseline duration | Total slack | Free slack | Resources | Work | Actual work | Cost | Baseline cost | Actual cost |
| --- | --- | --- | --- | --- | --- | --- | --- | --- | --- | --- | --- | --- | --- | --- | --- | --- | --- | --- | --- |
| 76 | 12 | **Finish HVAC** | 3d? | 2004-03-12 | 2004-03-17 |  |  |  | 2004-03-12 | 2004-03-16 | 3d? | 38.67d |  |  |  |  |  |  |  |
| 77 | 12.1 | Complete 1st floor - zone 1 HVAC | 1d? | 2004-03-12 | 2004-03-15 | 75, 43 |  |  | 2004-03-12 | 2004-03-12 | 1d? | 38.67d | 0d |  |  |  |  |  |  |
| 78 | 12.2 | Complete 2nd floor - zone 2 HVAC | 1d? | 2004-03-15 | 2004-03-16 | 77 |  |  | 2004-03-15 | 2004-03-15 | 1d? | 38.67d | 0d |  |  |  |  |  |  |
| 79 | 12.3 | Conduct HVAC inspection | 1d? | 2004-03-16 | 2004-03-17 | 78 |  |  | 2004-03-16 | 2004-03-16 | 1d? | 38.67d | 0d |  |  |  |  |  |  |
| 80 | 13 | **Carpet, Tile and Appliances** | 8d? | 2004-03-17 | 2004-03-29 |  |  |  | 2004-03-17 | 2004-03-26 | 8d? | 38.67d |  |  |  |  |  |  |  |
| 81 | 13.1 | Tile entry, kitchen and baths | 3d? | 2004-03-17 | 2004-03-22 | 79, 74 |  |  | 2004-03-17 | 2004-03-19 | 3d? | 38.67d | 0d |  |  |  |  |  |  |
| 82 | 13.2 | Carpet 1st floor | 2d? | 2004-03-22 | 2004-03-24 | 81 |  |  | 2004-03-22 | 2004-03-23 | 2d? | 38.67d | 0d |  |  |  |  |  |  |
| 83 | 13.3 | Carpet 2nd floor | 2d? | 2004-03-24 | 2004-03-26 | 82 |  |  | 2004-03-24 | 2004-03-25 | 2d? | 38.67d | 0d |  |  |  |  |  |  |
| 84 | 13.4 | Install appliances | 1d? | 2004-03-26 | 2004-03-29 | 83 |  |  | 2004-03-26 | 2004-03-26 | 1d? | 38.67d | 0d |  |  |  |  |  |  |
| 85 | 14 | **Landscaping** | 21d? | 2004-03-05 | 2004-04-05 |  |  |  | 2004-03-05 | 2004-04-02 | 21d? | 38.67d |  |  |  |  |  |  |  |
| 86 | 14.1 | Pour concrete driveway and sidewalk | 2d? | 2004-03-05 | 2004-03-09 | 60 |  |  | 2004-03-05 | 2004-03-08 | 2d? | 52.67d | 14d |  |  |  |  |  |  |
| 87 | 14.2 | Install backyard fence | 2d? | 2004-03-29 | 2004-03-31 | 84, 86 |  |  | 2004-03-29 | 2004-03-30 | 2d? | 38.67d | 0d |  |  |  |  |  |  |
| 88 | 14.3 | Sod and complete plantings - front yard | 2d? | 2004-03-31 | 2004-04-02 | 87 |  |  | 2004-03-31 | 2004-04-01 | 2d? | 38.67d | 0d |  |  |  |  |  |  |
| 89 | 14.4 | Sod and complete plantings - back yard | 1d? | 2004-04-02 | 2004-04-05 | 88 |  |  | 2004-04-02 | 2004-04-02 | 1d? | 38.67d | 0d |  |  |  |  |  |  |
| 90 | 15 | **Final Acceptance** | 8d? | 2004-04-05 | 2004-04-15 |  |  |  | 2004-04-05 | 2004-04-14 | 8d? | 38.67d |  |  |  |  |  |  |  |
| 91 | 15.1 | Complete final inspection for certification | 1d? | 2004-04-05 | 2004-04-06 | 89, 50, 40, 79, 74, 70, 65 |  |  | 2004-04-05 | 2004-04-05 | 1d? | 38.67d | 0d |  |  |  |  |  |  |
| 92 | 15.2 | Cleanup for occupancy | 1d? | 2004-04-06 | 2004-04-07 | 84, 91 |  |  | 2004-04-06 | 2004-04-06 | 1d? | 38.67d | 0d |  |  |  |  |  |  |
| 93 | 15.3 | Perform final walk-through inspection | 1d? | 2004-04-07 | 2004-04-08 | 92 |  |  | 2004-04-07 | 2004-04-07 | 1d? | 38.67d | 0d |  |  |  |  |  |  |
| 94 | 15.4 | Complete punch list items | 5d? | 2004-04-08 | 2004-04-15 | 93 |  |  | 2004-04-08 | 2004-04-14 | 5d? | 38.67d |  |  |  |  |  |  |  |
| 95 | 16 | **Project Management** | 170.98d? | 2003-10-14 A | 2004-06-08 |  | 21% | 135.35d? | 2003-10-14 | 2004-07-14 | 197d? | 0d |  |  | 575.6h | 575.6h | 81,165.02 | 187,660 | 81,165.02 |
| 96 | 16.1 | Project Management Period 1 | 9.43d | 2003-10-14 A | 2003-10-27 A |  | 100% |  | 2003-10-14 | 2003-10-24 | 9d? |  |  | Angel Diaz [50%]; Fumirou Yoshi [50%] | 75.44h | 75.44h | 11,777.9 | 9,900 | 11,777.9 |
| 97 | 16.2 | Project Management Period 2 | 10.29d | 2003-10-27 A | 2003-11-10 A | 96 | 100% |  | 2003-10-27 | 2003-11-21 | 20d? |  |  | Angel Diaz; Fumirou Yoshi | 164.64h | 164.64h | 22,638 | 44,000 | 22,638 |
| 98 | 16.3 | Project Management Period 3 | 13.98d | 2003-11-24 A | 2003-12-11 A | 97 | 100% |  | 2003-11-24 | 2004-01-16 | 40d? |  |  | Fumirou Yoshi; Shelly Urrutia; Angel Diaz | 335.52h | 335.52h | 46,749.12 | 133,760 | 46,749.12 |
| 99 | 16.4 | Project Management Period 4 | 18d? | 2003-12-11 | 2004-01-06 | 98 |  |  | 2004-01-19 | 2004-02-11 | 18d? | 0d |  |  |  |  |  |  |  |
| 100 | 16.5 | Project Management Period 5 | 12d? | 2004-01-06 | 2004-01-22 | 99 |  |  | 2004-02-12 | 2004-02-27 | 12d? | 0d |  |  |  |  |  |  |  |
| 101 | 16.6 | Project Management Period 6 | 14d? | 2004-01-22 | 2004-02-11 | 100 |  |  | 2004-03-01 | 2004-03-18 | 14d? | 0d |  |  |  |  |  |  |  |
| 102 | 16.7 | Project Management Period 7 | 12d? | 2004-02-11 | 2004-02-27 | 101 |  |  | 2004-03-19 | 2004-04-05 | 12d? | 0d |  |  |  |  |  |  |  |
| 103 | 16.8 | Project Management Period 8 | 12d? | 2004-02-27 | 2004-03-16 | 102 |  |  | 2004-04-06 | 2004-04-21 | 12d? | 0d |  |  |  |  |  |  |  |
| 104 | 16.9 | Project Management Period 9 | 10d? | 2004-03-16 | 2004-03-30 | 103 |  |  | 2004-04-22 | 2004-05-05 | 10d? | 0d |  |  |  |  |  |  |  |
| 105 | 16.10 | Project Management Period 10 | 20d? | 2004-03-30 | 2004-04-27 | 104 |  |  | 2004-05-06 | 2004-06-02 | 20d? | 0d |  |  |  |  |  |  |  |
| 106 | 16.11 | Project Management Period 11 | 20d? | 2004-04-27 | 2004-05-25 | 105 |  |  | 2004-06-03 | 2004-06-30 | 20d? | 0d |  |  |  |  |  |  |  |
| 107 | 16.12 | Project Management Period 12 | 10d? | 2004-05-25 | 2004-06-08 | 106 |  |  | 2004-07-01 | 2004-07-14 | 10d? | 0d |  |  |  |  |  |  |  |
